Schedule from MS Project, 2017-08-07 to 2017-09-01, A marks actual dates.

## Calendars

- 标准: Mon-Fri 08:00-12:00, 13:00-17:00; Sat-Sun off.

## Resources

| Resource |
| --- |
| 陈小桂 |
| 王大鹏 |
| 梁廷森 |
| 付陈林 |
| 文栎波 |
| 张籽娟 |
| 李凯 |
| 郭婷 |
| 杨建 |
| 买晨雨 |

## Schedule

| ID | WBS | Task | Type | Duration | Start | Finish | Predecessors | Complete | Remaining | Total slack | Deadline | Resources | Work | Actual work |
| --- | --- | --- | --- | --- | --- | --- | --- | --- | --- | --- | --- | --- | --- | --- |
| 1 | 1 | **会员系统开发** |  | 14d | 2017-08-15 A | 2017-09-01 |  | 43% | 8.05d | 0d |  |  | 400h | 136h |
| 2 | 1.1 | **业务功能开发** |  | 13d | 2017-08-15 A | 2017-08-31 |  | 33% | 8.67d | 0d |  |  | 216h | 56h |
| 3 | 1.1.1 | 储值购买反结算 | manual | 1d | 2017-08-15 A | 2017-08-15 A |  | 100% |  |  | 2017-08-15 | 陈小桂; 李凯 | 8h | 8h |
| 4 | 1.1.2 | 卡券购买反结算 | manual | 1d | 2017-08-16 A | 2017-08-16 A | 3 | 100% |  |  |  | 陈小桂 | 8h | 8h |
| 5 | 1.1.3 | 卡包购买反结算 | manual | 1d | 2017-08-17 A | 2017-08-17 A | 4 | 100% |  |  |  | 陈小桂 | 8h | 8h |
| 6 | 1.1.4 | 储值、卡券、卡包购买打印结算单 | manual | 2d | 2017-08-17 A | 2017-08-18 A |  | 100% |  |  |  | 张籽娟 | 16h | 16h |
| 7 | 1.1.5 | 结算不开票 | manual | 1d | 2017-08-18 A | 2017-08-18 A | 5 | 100% |  |  |  | 陈小桂 | 8h | 8h |
| 8 | 1.1.6 | **结算增加规则** |  | 3d | 2017-08-22 A | 2017-08-24 | 7 | 33% | 2d |  |  | 陈小桂 | 48h | 8h |
| 9 | 1.1.6.1 | 结算完后会员升级(生成会员级别调整记录) | manual | 2d | 2017-08-22 A | 2017-08-23 |  | 50% | 1d |  |  | 陈小桂 | 16h | 8h |
| 10 | 1.1.6.2 | 根据会员规则结算 | manual | 1d | 2017-08-24 | 2017-08-24 |  |  |  |  |  | 陈小桂 | 8h |  |
| 11 | 1.1.7 | **购买规则处理** |  | 1d | 2017-08-24 | 2017-08-24 |  |  |  | 0d |  |  | 8h |  |
| 12 | 1.1.7.1 | 储值完后会员升级(生成会员级别调整记录) | manual | 1d | 2017-08-24 | 2017-08-24 |  |  |  |  |  | 陈小桂 | 8h |  |
| 13 | 1.1.8 | 储值、卡券、卡包 界面整合 | manual | 5d | 2017-08-25 | 2017-08-31 | 8 |  |  |  |  | 陈小桂 | 40h |  |
| 14 | 1.1.9 | 客户微信端--储值明细改造 | manual | 1d | 2017-08-23 | 2017-08-23 |  |  |  |  |  | 郭婷; 张籽娟 | 16h |  |
| 15 | 1.1.10 | 客户微信端--积分明细改造 | manual | 1d | 2017-08-24 | 2017-08-24 |  |  |  |  |  | 郭婷; 张籽娟 | 16h |  |
| 16 | 1.1.11 | 卡券界面改造 | manual | 2d | 2017-08-23 | 2017-08-24 |  |  |  |  |  | 郭婷; 李凯 | 32h |  |
| 17 | 1.1.12 | 后台添加临时会员 | manual | 1d | 2017-08-15 | 2017-08-15 |  |  |  |  |  | 梁廷森 | 8h |  |
| 18 | 1.1.13 | 全员开通会员 | manual | 1d? | 2017-08-15 | 2017-08-15 |  |  |  |  |  |  |  |  |
| 19 | 1.2 | **规则定时任务** |  | 14d | 2017-08-15 A | 2017-09-01 |  | 53% | 6.63d | 0d |  |  | 184h | 80h |
| 20 | 1.2.1 | 会员卡券过期更新 | manual | 1d | 2017-08-15 A | 2017-08-15 A |  | 100% |  |  |  | 王大鹏 | 8h | 8h |
| 21 | 1.2.2 | 会员积分过期更新 | manual | 1d | 2017-08-15 A | 2017-08-15 A |  | 100% |  |  |  | 王大鹏 | 8h | 8h |
| 22 | 1.2.3 | 会员储值过期更新 | manual | 1d | 2017-08-15 A | 2017-08-15 A |  | 100% |  |  |  | 王大鹏 | 8h | 8h |
| 23 | 1.2.4 | 会员升级定时任务 | manual | 1d | 2017-08-15 A | 2017-08-15 A |  | 100% |  |  |  | 王大鹏 | 8h | 8h |
| 24 | 1.2.5 | 会员降级定时任务 | manual | 1d | 2017-08-15 A | 2017-08-15 A |  | 100% |  |  |  | 王大鹏 | 8h | 8h |
| 25 | 1.2.6 | 会员权益定时任务 | manual | 1d | 2017-08-15 A | 2017-08-15 A |  | 100% |  |  |  | 王大鹏 | 8h | 8h |
| 26 | 1.2.7 | 会员卡券到期提醒 | manual | 1d | 2017-08-15 A | 2017-08-15 A |  | 100% |  |  |  | 王大鹏 | 8h | 8h |
| 27 | 1.2.8 | 会员积分到期提醒 | manual | 1d | 2017-08-15 A | 2017-08-15 A |  | 100% |  |  |  | 王大鹏 | 8h | 8h |
| 28 | 1.2.9 | 会员生日到期提醒 | manual | 1d | 2017-08-15 A | 2017-08-15 A |  | 100% |  |  |  | 王大鹏 | 8h | 8h |
| 29 | 1.2.10 | 会员储值到期提醒 | manual | 1d | 2017-08-15 A | 2017-08-15 A |  | 100% |  |  |  | 王大鹏 | 8h | 8h |
| 30 | 1.2.11 | 会员首保到期提醒 | manual | 1d | 2017-08-21 | 2017-08-21 |  |  |  |  |  | 王大鹏 | 8h |  |
| 31 | 1.2.12 | 会员保养到期提醒 | manual | 1d | 2017-08-21 | 2017-08-21 |  |  |  |  |  | 王大鹏 | 8h |  |
| 32 | 1.2.13 | 会员保险到期提醒 | manual | 1d | 2017-08-21 | 2017-08-21 |  |  |  |  |  | 王大鹏 | 8h |  |
| 33 | 1.2.14 | 驾照年审到期提醒 | manual | 1d | 2017-08-22 | 2017-08-22 |  |  |  |  |  | 王大鹏 | 8h |  |
| 34 | 1.2.15 | 车辆年检到期提醒 | manual | 1d | 2017-08-22 | 2017-08-22 |  |  |  |  |  | 王大鹏 | 8h |  |
| 35 | 1.2.16 | 会员购买提醒 | manual | 2d | 2017-08-29 | 2017-08-30 |  |  |  |  |  | 王大鹏; 陈小桂 | 32h |  |
| 36 | 1.2.17 | 会员消费结账（问卷调查） | manual | 2d | 2017-08-31 | 2017-09-01 |  |  |  |  |  | 王大鹏; 陈小桂 | 32h |  |

| ID | WBS | Task | Type | Duration | Start | Finish | Complete | Remaining | Total slack | Resources | Work | Actual work |
| --- | --- | --- | --- | --- | --- | --- | --- | --- | --- | --- | --- | --- |
| 37 | 2 | **商周数据导入** |  | 1d | 2017-08-16 A | 2017-08-16 | 25% | 0.75d | 0d |  | 32h | 8h |
| 38 | 2.1 | 北京博恩商周数据导入 | manual | 1d | 2017-08-16 A | 2017-08-16 A | 100% |  |  | 梁廷森 | 8h | 8h |
| 39 | 2.2 | 陕西瑞迪商周数据初始化导出 | manual | 0.5d | 2017-08-16 | 2017-08-16 |  |  |  | 梁廷森 | 4h |  |
| 40 | 2.3 | 陕西博宝商周数据初始化导出 | manual | 0.5d | 2017-08-16 | 2017-08-16 |  |  |  | 梁廷森 | 4h |  |
| 41 | 2.4 | 陕西瑞捷商周数据初始化导出 | manual | 0.5d | 2017-08-16 | 2017-08-16 |  |  |  | 梁廷森 | 4h |  |
| 42 | 2.5 | 陕西瑞迪商周数据核实导入 | manual | 0.5d | 2017-08-16 | 2017-08-16 |  |  |  | 梁廷森 | 4h |  |
| 43 | 2.6 | 陕西博宝商周数据核实导入 | manual | 0.5d | 2017-08-16 | 2017-08-16 |  |  |  | 梁廷森 | 4h |  |
| 44 | 2.7 | 陕西瑞捷商周数据核实导入 | manual | 0.5d | 2017-08-16 | 2017-08-16 |  |  |  | 梁廷森 | 4h |  |
| 45 | 3 | **业务报表开发** |  | 1d | 2017-08-16 | 2017-08-16 |  |  | 0d |  |  |  |
| 46 | 3.1 | **运通汇系统客服业务报表-经销店** |  | 1d | 2017-08-16 | 2017-08-16 |  |  | 0d |  |  |  |
| 47 | 3.1.1 | 会员信息列表 | manual | 1d? | 2017-08-16 | 2017-08-16 |  |  |  |  |  |  |
| 48 | 3.1.2 | 会员积分列表 | manual | 1d? | 2017-08-16 | 2017-08-16 |  |  |  |  |  |  |
| 49 | 3.1.3 | 会员卡券列表 | manual | 1d? | 2017-08-16 | 2017-08-16 |  |  |  |  |  |  |
| 50 | 3.1.4 | 会员储值列表 | manual | 1d? | 2017-08-16 | 2017-08-16 |  |  |  |  |  |  |
| 51 | 4 | **云之家轻应用开发** |  | 17d | 2017-08-07 A | 2017-08-29 | 50% | 8.5d | 0d |  | 168h | 80h |
| 52 | 4.1 | 投诉建议应用开发 | manual | 5d | 2017-08-07 A | 2017-08-11 A | 100% |  |  |  |  |  |
| 53 | 4.2 | **开票信息应用开发** |  | 6d | 2017-08-16 A | 2017-08-23 | 67% | 2d | 0d | 李凯 | 120h | 80h |
| 54 | 4.2.1 | 接口开发 | manual | 2d | 2017-08-16 A | 2017-08-17 A | 100% |  |  | 李凯 | 16h | 16h |
| 55 | 4.2.2 | 界面开发 | manual | 2d | 2017-08-18 A | 2017-08-21 A | 100% |  |  | 李凯; 郭婷 | 32h | 32h |
| 56 | 4.2.3 | 界面接口调试 | manual | 1d | 2017-08-22 | 2017-08-22 |  |  |  | 李凯; 郭婷 | 16h |  |
| 57 | 4.2.4 | 测试上线 | manual | 1d | 2017-08-23 | 2017-08-23 |  |  |  | 文栎波 | 8h |  |
| 58 | 4.3 | **电子名片应用开发** |  | 11d | 2017-08-15 | 2017-08-29 |  |  | 0d |  | 48h |  |
| 59 | 4.3.1 | 接口开发 | manual | 2d | 2017-08-15 | 2017-08-16 |  |  |  | 李凯 | 16h |  |
| 60 | 4.3.2 | 界面开发 | manual | 1d | 2017-08-25 | 2017-08-25 |  |  |  | 郭婷 | 8h |  |
| 61 | 4.3.3 | 界面接口调试 | manual | 1d | 2017-08-28 | 2017-08-28 |  |  |  | 郭婷; 李凯 | 16h |  |
| 62 | 4.3.4 | 测试上线 | manual | 1d | 2017-08-29 | 2017-08-29 |  |  |  | 文栎波 | 8h |  |
| 63 | 4.4 | 审批消息列表展示 | manual | 1d? | 2017-08-07 | 2017-08-07 |  |  |  |  |  |  |
| 64 | 4.5 | 云之家审批代办消息提醒 | manual | 1d? | 2017-08-07 | 2017-08-07 |  |  |  |  |  |  |

| ID | WBS | Task | Type | Duration | Start | Finish | Complete | Remaining | Total slack | Resources | Work | Actual work |
| --- | --- | --- | --- | --- | --- | --- | --- | --- | --- | --- | --- | --- |
| 65 | 5 | **bug修改** |  | 5d | 2017-08-15 A | 2017-08-21 A | 100% |  |  |  | 24h | 24h |
| 66 | 5.1 | 温州欣奥会员导入 | manual | 1d | 2017-08-15 A | 2017-08-15 A | 100% |  |  | 梁廷森 | 8h | 8h |
| 67 | 5.2 | 重庆汇捷无限卡券显示为单次问题 | manual | 1d | 2017-08-21 A | 2017-08-21 A | 100% |  |  | 陈小桂 | 8h | 8h |
| 68 | 5.3 | 北京兴奥无法结算问题 | manual | 1d | 2017-08-21 A | 2017-08-21 A | 100% |  |  | 陈小桂 | 8h | 8h |
| 69 | 6 | **高可用系统框架** |  | 8d | 2017-08-14 A | 2017-08-23 | 50% | 4d | 0d |  | 120h | 62.4h |
| 70 | 6.1 | **方案整理** |  | 8d | 2017-08-14 A | 2017-08-23 | 60% | 3.2d | 0d | 王大鹏 | 120h | 62.4h |
| 71 | 6.1.1 | 方案制定 | manual | 3d | 2017-08-14 A | 2017-08-16 A | 100% |  |  | 王大鹏 | 24h | 24h |
| 72 | 6.1.2 | 方案讨论 | manual | 1d | 2017-08-21 | 2017-08-21 |  |  |  | 付陈林; 王大鹏 | 16h |  |
| 73 | 6.1.3 | 方案确认 | manual | 1d | 2017-08-23 | 2017-08-23 |  |  |  | 付陈林; 王大鹏 | 16h |  |
| 74 | 6.2 | 方案实施 | manual | 1d? | 2017-08-14 | 2017-08-14 |  |  |  |  |  |  |
| 75 | 7 | **财务系统开票明细** |  | 1d | 2017-08-16 | 2017-08-16 |  |  | 0d |  | 8h |  |
| 76 | 7.1 | DSM数据对接调研 | manual | 1d | 2017-08-16 | 2017-08-16 |  |  |  | 付陈林 | 8h |  |
| 77 | 8 | 微信商城开发 | manual | 1d? | 2017-08-16 | 2017-08-16 |  |  |  |  |  |  |
